# 3.13 大学生食堂外卖APP人力资源确定

Schedule from MS Project, 2017-11-17 to 2019-06-18, scheduled back from the finish, costs in ¥, A marks actual dates.

## Calendars

- “标准”的副本: Mon-Fri 08:00-12:00, 13:00-17:00; Sat-Sun off.

## Resources

| Resource | Rate |
| --- | --- |
| 项目经理 | 25 |
| 产品经理 | 20 |
| UI/UE设计师 | 20 |
| 软件架构师 | 20 |
| 测试主管 | 20 |
| 运营主管 | 15 |
| 程序员1 | 15 |
| 程序员2 | 15 |
| 程序员3 | 15 |
| 测试员1 | 15 |
| 测试员2 | 15 |
| 需求专家 | 20 |
| 质量专家 | 20 |
| 风险专家 | 20 |
| 采购员 | 5 |
| 资源分析师 | 15 |
| 团队建设费用 |  |
| 测试货物 | 100 |
| 间接成本 |  |
| 储备 |  |

## Schedule

| ID | WBS | Task | Type | Duration | Start | Finish | Predecessors | Remaining | Total slack | Free slack | Constraint | Resources | Work | Cost | 总成本 | 剩余 |
| --- | --- | --- | --- | --- | --- | --- | --- | --- | --- | --- | --- | --- | --- | --- | --- | --- |
| 1 | 1 | 大学生食堂外卖APP | manual | 1d? | 2019-06-18 08:00 | 2019-06-18 17:00 |  |  |  |  | as late as possible |  |  |  | ¥79170.00 | ¥79170.00 |
| 2 | 2 | **启动** |  | 4d | 2019-03-24 08:00 A | 2019-03-27 17:00 |  | 4d |  |  | as late as possible | 间接成本 [0.1%]; 储备 [0.1%] | 40h | 1,900 | ¥4000.00 | ¥4000.00 |
| 3 | 2.1 | 任命项目经理 | manual | 0.5d | 2019-03-24 13:00 | 2019-03-24 17:00 |  |  |  |  | as late as possible |  |  |  | ¥400.00 | ¥400.00 |
| 4 | 2.2 | 组建核心团队 |  | 0.5d | 2019-03-25 08:00 A | 2019-03-25 12:00 |  | 0.5d | 0d |  | as late as possible | 项目经理; UI/UE设计师; 测试主管; 产品经理; 需求专家 | 20h | 420 | ¥400.00 | ¥400.00 |
| 5 | 2.3 | 干系人分析 | manual | 0.5d | 2019-03-25 13:00 | 2019-03-25 17:00 |  |  |  |  | as late as possible | 需求专家 | 4h | 80 | ¥400.00 | ¥400.00 |
| 6 | 2.4 | 制定章程 | manual | 0.5d | 2019-03-25 13:00 | 2019-03-25 17:00 | 3, 4, 5 |  |  |  | as late as possible | 项目经理 | 4h | 100 | ¥400.00 | ¥400.00 |
| 7 | 2.5 | 确认项目发起人 | manual | 0.5d | 2019-03-26 13:00 | 2019-03-26 17:00 | 5 |  |  |  | as late as possible | 项目经理 | 4h | 100 | ¥400.00 | ¥400.00 |
| 8 | 2.6 | 项目启动大会 | manual | 1d | 2019-03-27 08:00 | 2019-03-27 17:00 | 5 |  |  |  | as late as possible | 项目经理 | 8h | 200 | ¥1800.00 | ¥2000.00 |
| 9 | 3 | **规划** |  | 12d | 2019-03-28 08:00 | 2019-04-12 17:00 |  |  |  |  | as late as possible | 间接成本 [0.1%]; 储备 [0.1%] | 274h | 9,150 | ¥23450.00 | ¥23450.00 |
| 10 | 3.1 | **规划范围** |  | 5d | 2019-03-28 08:00 | 2019-04-03 17:00 |  |  |  |  | as late as possible |  | 92h | 1,860 | ¥9700.00 | ¥9700.00 |
| 11 | 3.1.1 | 制定需求说明书 | manual | 0.5d | 2019-03-28 13:00 | 2019-03-28 17:00 | 7 |  |  |  | as late as possible | 项目经理 | 4h | 100 | ¥3500.00 | ¥3500.00 |
| 12 | 3.1.2 | 界面设计 | manual | 0.5d | 2019-03-28 13:00 | 2019-03-28 17:00 | 11 |  |  |  | as late as possible | UI/UE设计师 | 4h | 80 | ¥1800.00 | ¥1800.00 |
| 13 | 3.1.3 | 详细设计说明书 |  | 0.5d | 2019-03-29 13:00 | 2019-03-29 17:00 | 11 |  | 1d | 0d | finish no later than 2019-03-29 17:00 | UI/UE设计师 | 4h | 80 | ¥2000.00 | ¥2000.00 |
| 14 | 3.1.4 | 范围说明书 | manual | 1d | 2019-03-28 08:00 | 2019-03-28 17:00 | 11 |  |  |  | as late as possible | UI/UE设计师 | 8h | 160 | ¥1200.00 | ¥1200.00 |
| 15 | 3.1.5 | 创建WBS | manual | 1d | 2019-04-01 08:00 | 2019-04-01 17:00 | 12, 13, 11 |  |  |  | as late as possible | UI/UE设计师 | 8h | 160 | ¥800.00 | ¥800.00 |
| 16 | 3.1.6 | 形成范围基准 | manual | 2d | 2019-04-02 08:00 | 2019-04-03 17:00 | 14 |  |  |  | finish no later than 2019-04-03 17:00 | UI/UE设计师; 产品经理; 需求专家; 风险专家 | 64h | 1,280 | ¥400.00 | ¥400.00 |
| 17 | 3.2 | **规划时间** |  | 2d | 2019-03-29 08:00 | 2019-04-01 17:00 |  |  |  |  | as late as possible |  | 32h | 540 | ¥2400.00 | ¥2400.00 |
| 18 | 3.2.1 | 排列工作包顺序 | manual | 0.5d | 2019-03-28 13:00 | 2019-03-28 17:00 | 15 |  |  |  | as late as possible | 产品经理; 软件架构师 | 8h | 160 | ¥400.00 | ¥400.00 |
| 19 | 3.2.2 | 估算资源 | manual | 0.5d | 2019-03-28 13:00 | 2019-03-28 17:00 | 18 |  |  |  | as late as possible | 资源分析师; 运营主管 | 8h | 120 | ¥800.00 | ¥800.00 |
| 20 | 3.2.3 | 估算持续时间 | manual | 0.5d | 2019-03-29 13:00 | 2019-03-29 17:00 | 18 |  |  |  | as late as possible | 运营主管; 资源分析师 | 8h | 120 | ¥800.00 | ¥800.00 |
| 21 | 3.2.4 | 制定进度计划 | manual | 0.5d | 2019-03-29 13:00 | 2019-03-29 17:00 | 19 |  |  |  | as late as possible | 软件架构师; 运营主管 | 8h | 140 | ¥400.00 | ¥400.00 |
| 22 | 3.3 | **规划成本** |  | 2d | 2019-03-29 08:00 | 2019-04-01 17:00 |  |  |  |  | as late as possible |  | 32h | 520 | ¥2000.00 | ¥2000.00 |
| 23 | 3.3.1 | 项目运算 | manual | 1d | 2019-04-01 08:00 | 2019-04-01 17:00 | 20 |  |  |  | as late as possible | 运营主管 | 8h | 120 | ¥800.00 | ¥800.00 |
| 24 | 3.3.2 | 项目成本估算 | manual | 1d | 2019-04-02 08:00 | 2019-04-02 17:00 |  |  |  |  | finish no later than 2019-04-02 17:00 | 风险专家; 运营主管; 资源分析师 | 24h | 400 | ¥1200.00 | ¥1200.00 |

| ID | WBS | Task | Type | Duration | Start | Finish | Predecessors | Constraint | Resources | Work | Cost | 总成本 | 剩余 |
| --- | --- | --- | --- | --- | --- | --- | --- | --- | --- | --- | --- | --- | --- |
| 25 | 3.4 | **规划质量** |  | 1d | 2019-04-02 08:00 | 2019-04-02 17:00 |  | as late as possible |  | 16h | 280 | ¥2550.00 | ¥2540.00 |
| 26 | 3.4.1 | 制定测试计划 | manual | 0.5d | 2019-03-28 13:00 | 2019-03-28 17:00 | 15 | as late as possible | 测试主管; 质量专家 | 8h | 160 | ¥650.00 | ¥650.00 |
| 27 | 3.4.2 | 制定测试用例 | manual | 0.5d | 2019-03-28 13:00 | 2019-03-28 17:00 | 26 | as late as possible | 测试员1; 测试员2 | 8h | 120 | ¥1900.00 | ¥1900.00 |
| 28 | 3.5 | **规划人力资源** |  | 1d | 2019-04-04 08:00 | 2019-04-04 17:00 |  | as late as possible |  | 28h | 500 | ¥1600.00 | ¥1600.00 |
| 29 | 3.5.1 | 制定人力资源计划 | manual | 0.5d | 2019-04-03 13:00 | 2019-04-03 17:00 | 23 | as late as possible | 运营主管; 资源分析师; 产品经理; 质量专家 | 16h | 280 | ¥800.00 | ¥800.00 |
| 30 | 3.5.2 | 制定人员配备管理计划 | manual | 0.5d | 2019-04-03 13:00 | 2019-04-03 17:00 | 29 | as late as possible | 产品经理; 运营主管; 质量专家 | 12h | 220 | ¥800.00 | ¥800.00 |
| 31 | 3.6 | **规划沟通** |  | 1d | 2019-04-05 08:00 | 2019-04-05 17:00 |  | as late as possible |  | 64h | 1,240 | ¥800.00 | ¥800.00 |
| 32 | 3.6.1 | 制定沟通管理计划 | manual | 1d | 2019-04-04 08:00 | 2019-04-04 17:00 | 29 | as late as possible | UI/UE设计师; 测试主管; 产品经理; 项目经理; 需求专家; 运营主管; 质量专家; 资源分析师 | 64h | 1,240 | ¥800.00 | ¥800.00 |
| 33 | 3.7 | **规定采纳** |  | 0d | 2019-04-05 17:00 | 2019-04-05 17:00 |  | as late as possible |  |  |  | ¥2800.00 | ¥2800.00 |
| 34 | 3.7.1 | 自制外购分析 | milestone, manual | 0d | 2019-03-29 17:00 | 2019-03-29 17:00 | 18 | as late as possible | 运营主管 |  |  | ¥800.00 | ¥800.00 |
| 35 | 3.7.2 | 制定采购文件 | milestone, manual | 0d | 2019-03-29 17:00 | 2019-03-29 17:00 | 34 | as late as possible | 运营主管 |  |  | ¥2000.00 | ¥2000.00 |
| 36 | 3.8 | **规划风险** |  | 361d | 2017-11-17 08:00 | 2019-04-05 17:00 |  | as late as possible |  | 6h | 120 | ¥1600.00 | ¥1600.00 |
| 37 | 3.8.1 | 识别风险 | manual | 0.25d | 2019-04-03 15:00 | 2019-04-03 17:00 | 15, 18, 23 | finish no later than 2019-04-03 17:00 | 风险专家 | 2h | 40 | ¥400.00 | ¥400.00 |
| 38 | 3.8.2 | 风险分析 | manual | 0.25d | 2019-04-03 15:00 | 2019-04-03 17:00 | 37 | as late as possible | 风险专家 | 2h | 40 | ¥400.00 | ¥400.00 |
| 39 | 3.8.3 | 制定风险登记册 | manual | 0.25d | 2019-04-03 15:00 | 2019-04-03 17:00 | 37 | as late as possible | 风险专家 | 2h | 40 | ¥400.00 | ¥400.00 |
| 40 | 3.9 | 规划整合 | manual | 0.25d | 2019-04-03 15:00 | 2019-04-03 17:00 | 38 | as late as possible | 风险专家; 项目经理 | 4h | 90 | ¥400.00 | ¥400.00 |
| 41 | 4 | **执行与监控** |  | 20d | 2019-04-05 08:00 | 2019-05-02 17:00 |  | as late as possible | 间接成本 [0.1%]; 储备 [0.1%] | 135.2h | 12,274 | ¥46320.00 | ¥46320.00 |
| 42 | 4.1 | 组建项目团队 | milestone, manual | 0d | 2019-04-07 17:00 | 2019-04-07 17:00 |  | as late as possible | 项目经理 |  |  | ¥5100.00 | ¥5100.00 |
| 43 | 4.2 | **项目执行** |  | 8d | 2019-04-05 08:00 | 2019-04-16 17:00 |  | as late as possible |  | 62.4h | 936 | ¥9670.00 | ¥9670.00 |
| 44 | 4.2.1 | **用户模块** |  | 3d | 2019-04-08 08:00 | 2019-04-10 17:00 |  | as late as possible |  | 22.4h | 336 | ¥3800.00 | ¥3800.00 |
| 45 | 4.2.1.1 | 注册登陆 | manual | 0.3d | 2019-04-08 14:36 | 2019-04-08 17:00 | 42 | as late as possible | 程序员1 | 2.4h | 36 | ¥820.00 | ¥820.00 |
| 46 | 4.2.1.2 | 网站首页 | manual | 0.5d | 2019-04-08 13:00 | 2019-04-08 17:00 | 45 | as late as possible | 程序员1 | 4h | 60 | ¥820.00 | ¥820.00 |
| 47 | 4.2.1.3 | 浏览菜品 | manual | 0.5d | 2019-04-09 13:00 | 2019-04-09 17:00 | 45 | as late as possible | 程序员1 | 4h | 60 | ¥540.00 | ¥540.00 |
| 48 | 4.2.1.4 | 搜索菜品 | manual | 0.5d | 2019-04-09 13:00 | 2019-04-09 17:00 | 45 | as late as possible | 程序员1 | 4h | 60 | ¥540.00 | ¥540.00 |
| 49 | 4.2.1.5 | 订单 | manual | 0.5d | 2019-04-10 13:00 | 2019-04-10 17:00 | 45 | as late as possible | 程序员1 | 4h | 60 | ¥540.00 | ¥540.00 |
| 50 | 4.2.1.6 | 个人页面 | manual | 0.5d | 2019-04-10 13:00 | 2019-04-10 17:00 |  | as late as possible | 程序员1 | 4h | 60 | ¥540.00 | ¥540.00 |

| ID | WBS | Task | Type | Duration | Start | Finish | Predecessors | Constraint | Resources | Work | Cost | 总成本 | 剩余 |
| --- | --- | --- | --- | --- | --- | --- | --- | --- | --- | --- | --- | --- | --- |
| 51 | 4.2.2 | **商家模块** |  | 3d | 2019-04-09 08:00 | 2019-04-11 17:00 |  | as late as possible |  | 24h | 360 | ¥3800.00 | ¥3800.00 |
| 52 | 4.2.2.1 | 注册入住 | manual | 0.5d | 2019-04-09 13:00 | 2019-04-09 17:00 | 42 | as late as possible | 程序员2 | 4h | 60 | ¥540.00 | ¥540.00 |
| 53 | 4.2.2.2 | 菜品管理 | manual | 0.5d | 2019-04-09 13:00 | 2019-04-09 17:00 | 42 | as late as possible | 程序员2 | 4h | 60 | ¥820.00 | ¥820.00 |
| 54 | 4.2.2.3 | 订单处理 | manual | 0.5d | 2019-04-10 13:00 | 2019-04-10 17:00 | 42 | as late as possible | 程序员2 | 4h | 60 | ¥540.00 | ¥540.00 |
| 55 | 4.2.2.4 | 增减菜品 | manual | 0.5d | 2019-04-10 13:00 | 2019-04-10 17:00 | 42 | as late as possible | 程序员2 | 4h | 60 | ¥540.00 | ¥540.00 |
| 56 | 4.2.2.5 | 统计 | manual | 0.5d | 2019-04-11 13:00 | 2019-04-11 17:00 | 42 | as late as possible | 程序员2 | 4h | 60 | ¥820.00 | ¥820.00 |
| 57 | 4.2.2.6 | 商家配置 | manual | 0.5d | 2019-04-11 13:00 | 2019-04-11 17:00 | 42 | as late as possible | 程序员2 | 4h | 60 | ¥540.00 | ¥540.00 |
| 58 | 4.2.3 | **管理员模块** |  | 2d | 2019-04-12 08:00 | 2019-04-14 17:00 |  | as late as possible |  | 16h | 240 | ¥2080.00 | ¥2080.00 |
| 59 | 4.2.3.1 | 商家审核 | manual | 0.5d | 2019-04-12 13:00 | 2019-04-12 17:00 | 50 | as late as possible | 程序员3 | 4h | 60 | ¥540.00 | ¥540.00 |
| 60 | 4.2.3.2 | 促销活动 | manual | 0.5d | 2019-04-12 13:00 | 2019-04-12 17:00 | 50 | as late as possible | 程序员3 | 4h | 60 | ¥820.00 | ¥820.00 |
| 61 | 4.2.3.3 | 统计分析 | manual | 0.5d | 2019-04-13 13:00 | 2019-04-13 17:00 | 55 | as late as possible | 程序员3 | 4h | 60 | ¥240.00 | ¥240.00 |
| 62 | 4.2.3.4 | 备份 | manual | 0.5d | 2019-04-14 13:00 | 2019-04-14 17:00 | 44, 51 | as late as possible | 程序员3 | 4h | 60 | ¥480.00 | ¥480.00 |
| 63 | 4.3 | **项目监控** |  | 1d | 2019-04-15 08:00 | 2019-04-15 17:00 |  | as late as possible |  | 44h | 850 | ¥7150.00 | ¥7150.00 |
| 64 | 4.3.1 | 各项指标监控 | manual | 0.25d | 2019-04-09 15:00 | 2019-04-09 17:00 | 60 | as late as possible | 产品经理; 风险专家; 运营主管; 质量专家; 软件架构师 | 10h | 190 | ¥1350.00 | ¥1350.00 |
| 65 | 4.3.2 | 监控评审 | manual | 0.25d | 2019-04-09 15:00 | 2019-04-09 17:00 | 64 | as late as possible | 测试主管; 产品经理; 风险专家; 软件架构师; 运营主管; 质量专家 | 12h | 230 | ¥1400.00 | ¥1400.00 |
| 66 | 4.3.3 | 变更评审 | manual | 0.25d | 2019-04-09 15:00 | 2019-04-09 17:00 | 64 | as late as possible | 测试主管; 风险专家; 软件架构师; 运营主管; 质量专家 | 10h | 190 | ¥1400.00 | ¥1400.00 |
| 67 | 4.3.4 | 例会 | manual | 0.25d | 2019-04-09 15:00 | 2019-04-09 17:00 | 65 | as late as possible | 测试主管; 风险专家; 软件架构师; 项目经理; 运营主管; 质量专家 | 12h | 240 | ¥3000.00 | ¥3000.00 |
| 68 | 4.4 | **管理干系人** |  | 0d | 2019-04-15 17:00 | 2019-04-15 17:00 |  | as late as possible |  |  |  | ¥1200.00 | ¥1200.00 |
| 69 | 4.4.1 | 发布项目信息 | milestone, manual | 0d | 2019-04-16 17:00 | 2019-04-16 17:00 | 62 | as late as possible | UI/UE设计师; 产品经理; 风险专家; 软件架构师; 项目经理; 需求专家; 运营主管; 质量专家; 资源分析师 |  |  | ¥400.00 | ¥400.00 |
| 70 | 4.4.2 | 报告监控指标 | milestone, manual | 0d | 2019-04-16 17:00 | 2019-04-16 17:00 | 69 | as late as possible | UI/UE设计师; 测试主管; 产品经理; 风险专家; 项目经理; 运营主管; 质量专家 |  |  | ¥400.00 | ¥400.00 |
| 71 | 4.4.3 | 干系人沟通 | milestone, manual | 0d | 2019-04-16 17:00 | 2019-04-16 17:00 | 69 | as late as possible | UI/UE设计师; 测试主管; 产品经理; 风险专家; 软件架构师; 项目经理; 需求专家; 运营主管; 质量专家; 资源分析师 |  |  | ¥400.00 | ¥400.00 |
| 72 | 4.5 | **团队建设** |  | 1d | 2019-04-16 08:00 | 2019-04-16 17:00 |  | as late as possible |  | 16h | 248 | ¥23200.00 | ¥23200.00 |
| 73 | 4.5.1 | 培训 | manual | 0.2d | 2019-04-08 15:24 | 2019-04-08 17:00 | 42 | as late as possible | 测试员1; 测试员2; 测试主管; 产品经理; 程序员1; 程序员2; 程序员3; 采购员 | 12.8h | 192 | ¥5500.00 | ¥5500.00 |
| 74 | 4.5.2 | 娱乐活动 | manual | 0.2d | 2019-04-16 15:24 | 2019-04-16 17:00 | 70 | as late as possible | 运营主管 | 1.6h | 24 | ¥4200.00 | ¥4200.00 |
| 75 | 4.5.3 | 沟通 | manual | 0.2d | 2019-04-08 15:24 | 2019-04-08 17:00 | 42 | as late as possible | 产品经理 | 1.6h | 32 | ¥3500.00 | ¥3500.00 |
| 76 | 4.6 | 采购 | manual | 0.2d | 2019-04-08 15:24 | 2019-04-08 17:00 | 42 | as late as possible | 采购员 | 1.6h | 8 | ¥8000.00 | ¥8000.00 |
| 77 | 4.7 | 项目验收 | manual | 0.2d | 2019-04-17 15:24 | 2019-04-17 17:00 | 42 | as late as possible | 测试主管; 产品经理; 风险专家; 软件架构师; 项目经理; 需求专家; 质量专家 | 11.2h | 232 | ¥2000.00 | ¥2000.00 |

| ID | WBS | Task | Type | Duration | Start | Finish | Predecessors | Constraint | Resources | Work | Cost | 总成本 | 剩余 |
| --- | --- | --- | --- | --- | --- | --- | --- | --- | --- | --- | --- | --- | --- |
| 78 | 5 | **收尾** |  | 1d | 2019-04-17 08:00 | 2019-04-17 17:00 |  | as late as possible | 间接成本 [0.1%]; 储备 [0.1%] | 7.92h | 1,171.6 | ¥5400.00 | ¥5400.00 |
| 79 | 5.1 | 项目终验 | manual | 0.33d | 2019-04-17 14:21 | 2019-04-17 17:00 | 76 | as late as possible | UI/UE设计师 | 2.64h | 52.8 | ¥2000.00 | ¥2000.00 |
| 80 | 5.2 | 结束采购 | manual | 0.33d | 2019-04-17 14:21 | 2019-04-17 17:00 | 76 | as late as possible | 产品经理 | 2.64h | 52.8 | ¥400.00 | ¥400.00 |
| 81 | 5.3 | 项目内部收尾 | manual | 0.33d | 2019-04-17 14:21 | 2019-04-17 17:00 | 76 | as late as possible | 项目经理 | 2.64h | 66 | ¥3000.00 | ¥3000.00 |
